# PPCLINICA

How a schedule from MS Project changed from version to version. A marks actual dates.

## Version 1 (saved 2021-07-19)

Note of the change: documentos da primeira entrega

| ID | WBS | Task | Duration | Start | Finish | Predecessors | Total float |
| --- | --- | --- | --- | --- | --- | --- | --- |
| 1 | 1 | **Projeto Igreja** | 36.25d? | 2021-07-15 09:00 | 2021-09-03 11:00 |  |  |
| 2 | 1.1 | **Prospecção** | 0.23d | 2021-07-15 09:00 | 2021-07-15 10:48 |  | 24.15d |
| 3 | 1.1.1 | **Estudo do tema** | 0.23d | 2021-07-15 09:00 | 2021-07-15 10:48 |  | 24.15d |
| 4 |  | Estudar Domínio de Aplicação | 0.2d | 2021-07-15 09:00 | 2021-07-15 10:36 |  | 24.15d |
| 5 |  | Divisão de tarefas | 0.03d | 2021-07-15 10:36 | 2021-07-15 10:48 | 4 | 24.15d |
| 6 | 1.2 | **Análise** | 2.29d | 2021-07-15 09:00 | 2021-07-19 11:18 |  | 24.38d |
| 7 | 1.2.1 | **Documento de Requisitos** | 1.16d | 2021-07-15 09:00 | 2021-07-16 10:18 |  | 24.26d |
| 8 |  | Elaborar DRE | 0.72d | 2021-07-15 10:48 | 2021-07-16 09:18 | 3 | 24.15d |
| 9 |  | Revisar DRE | 0.12d | 2021-07-16 09:18 | 2021-07-16 10:18 | 8 | 24.26d |
| 10 |  | Submeter DRE para Aprovação do Cliente | 0d | 2021-07-15 09:00 | 2021-07-15 09:00 |  | 25.42d |
| 11 | 1.2.2 | **Est. Prel. Tamanho** | 0.62d | 2021-07-16 10:18 | 2021-07-16 16:18 |  | 33.96d |
| 12 |  | Estimar Tamanho do Projeto | 0.38d | 2021-07-16 10:18 | 2021-07-16 14:18 | 7 | 33.96d |
| 13 |  | Revisar Estimativa de Tamanho do Projeto | 0.25d | 2021-07-16 14:18 | 2021-07-16 16:18 | 12 | 33.96d |
| 14 | 1.2.3 | **Est. Prel Cronograma** | 0.5d | 2021-07-16 16:18 | 2021-07-19 11:18 |  | 33.96d |
| 15 |  | Elaborar Cronograma Preliminar | 0.25d | 2021-07-16 16:18 | 2021-07-19 09:18 | 11 | 33.96d |
| 16 |  | Revisar Cronograma Preliminar | 0.25d | 2021-07-19 09:18 | 2021-07-19 11:18 | 15 | 33.96d |
| 17 | 1.2.4 | **MRB** | 0.88d | 2021-07-16 10:18 | 2021-07-19 09:18 |  | 24.26d |
| 18 |  | Elaborar MRB | 0.62d | 2021-07-16 10:18 | 2021-07-16 16:18 | 7 | 24.26d |
| 19 |  | Revisar MRB | 0.25d | 2021-07-16 16:18 | 2021-07-19 09:18 | 18 | 24.26d |
| 20 | 1.3 | **Projeto** | 2.79d | 2021-07-20 09:00 | 2021-07-22 16:18 |  |  |
| 21 | 1.3.1 | **Diagrama de Classes** | 0.75d | 2021-07-20 09:00 | 2021-07-20 16:00 |  | 23.3d |
| 22 |  | Elaborar Diagrama de Classe | 0.25d | 2021-07-20 09:00 | 2021-07-20 11:00 | 19 | 23.3d |
| 23 |  | Revisar Diagrama de Classe | 0.25d | 2021-07-20 11:00 | 2021-07-20 14:00 | 22 | 23.3d |
| 24 |  | Atualizar MRB | 0.25d | 2021-07-20 14:00 | 2021-07-20 16:00 | 23 | 23.3d |
| 25 | 1.4 | **Planejamento** | 0.54d? | 2021-07-22 16:18 | 2021-07-23 11:36 |  | 21.05d |
| 26 |  | Pesquisar Soluções Existentes | 0.4d? | 2021-07-22 16:18 | 2021-07-23 10:36 | 20 | 21.05d |
| 27 |  | Definir Linguagens e Frameworks | 0.07d? | 2021-07-23 10:36 | 2021-07-23 11:12 | 26 | 21.05d |
| 28 |  | Revisar Divisão de tarefas | 0.05d? | 2021-07-23 11:12 | 2021-07-23 11:36 | 27 | 21.05d |
| 29 | 1.5 | **Desenvolvimento** | 7d? | 2021-07-23 11:36 | 2021-08-03 11:37 |  | 21.05d |
| 30 | 1.5.1 | **Release 01** | 4.19d? | 2021-07-23 11:36 | 2021-07-29 14:07 |  | 21.05d |
| 31 | 1.5.1.1 | **Implementação** | 4d? | 2021-07-23 11:36 | 2021-07-29 11:36 |  | 21.05d |
| 32 | 1.5.1.1.1 | **Requisitos Funcionais de Cliente 01** | 1.21d? | 2021-07-23 11:36 | 2021-07-26 14:16 |  | 21.05d |
| 33 |  | Implementar RFS01 | 0.33d | 2021-07-23 11:36 | 2021-07-23 14:16 | 25 | 21.05d |
| 34 |  | Implementar RFS02 | 0.33d? | 2021-07-23 14:16 | 2021-07-26 09:56 | 33 | 21.05d |
| 35 |  | Implementar RFS03 | 0.21d? | 2021-07-26 09:56 | 2021-07-26 11:36 | 34 | 21.05d |
| 36 |  | Implementar RFS04 | 0.33d? | 2021-07-26 11:36 | 2021-07-26 14:16 | 35 | 21.05d |
| 37 | 1.5.1.1.2 | **Requisitos Funcionais de Cliente 03** | 1.58d? | 2021-07-26 14:16 | 2021-07-28 09:56 |  | 21.05d |
| 38 |  | Implementar RFS09 | 0.33d? | 2021-07-26 14:16 | 2021-07-27 09:56 | 32 | 21.05d |
| 39 |  | Implementar RFS10 | 0.21d? | 2021-07-27 09:56 | 2021-07-27 11:36 | 38 | 21.05d |
| 40 |  | Implementar RFS11 | 0.33d? | 2021-07-27 11:36 | 2021-07-27 14:16 | 39 | 21.05d |
| 41 |  | Implementar RFS12 | 0.33d? | 2021-07-27 14:16 | 2021-07-28 09:56 | 40 | 21.05d |
| 42 | 1.5.1.1.3 | **Requisitos Funcionais de Cliente 04** | 1.21d | 2021-07-28 09:56 | 2021-07-29 11:36 |  | 21.05d |
| 43 |  | Implementar RFS13 | 0.21d | 2021-07-28 09:56 | 2021-07-28 11:36 | 37 | 21.05d |
| 44 |  | Implementar RFS14 | 0.33d | 2021-07-28 11:36 | 2021-07-28 14:16 | 43 | 21.05d |
| 45 |  | Implementar RFS15 | 0.33d | 2021-07-28 14:16 | 2021-07-29 09:56 | 44 | 21.05d |
| 46 |  | Implementar RFS16 | 0.21d | 2021-07-29 09:56 | 2021-07-29 11:36 | 45 | 21.05d |
| 47 | 1.5.1.2 | **Teste** | 2.98d | 2021-07-26 14:16 | 2021-07-29 14:07 |  | 21.05d |
| 48 |  | Testar RC01 | 0.19d | 2021-07-26 14:16 | 2021-07-26 15:46 | 32 | 23.84d |
| 49 |  | Testar RC02 | 0.19d | 2021-07-28 09:56 | 2021-07-28 11:26 | 37 | 22.26d |
| 50 |  | Testar RC03 | 0.19d | 2021-07-29 11:36 | 2021-07-29 14:07 | 42 | 21.05d |
| 51 | 1.5.2 | **Release 02** | 2.81d | 2021-07-29 14:07 | 2021-08-03 11:37 |  | 21.05d |
| 52 | 1.5.2.1 | **Implementação** | 2.81d | 2021-07-29 14:07 | 2021-08-03 11:37 |  | 21.05d |
| 53 | 1.5.2.1.1 | **Requisitos Funcionais de Cliente 02** | 1.75d | 2021-07-29 14:07 | 2021-08-02 11:07 |  | 21.05d |
| 54 |  | Implementar RFS05 | 0.39d | 2021-07-29 14:07 | 2021-07-30 10:07 | 30 | 21.05d |
| 55 |  | Implementar RFS06 | 0.27d | 2021-07-30 10:07 | 2021-07-30 13:07 | 54 | 21.05d |
| 56 |  | Implementar RFS07 | 0.27d | 2021-07-30 13:07 | 2021-08-02 09:07 | 55 | 21.05d |
| 57 |  | Implementar RFS08 | 0.25d | 2021-08-02 09:07 | 2021-08-02 11:07 | 56 | 21.05d |
| 58 | 1.5.2.1.2 | **Requisitos Funcionais de Cliente 05** | 0.88d | 2021-08-02 11:07 | 2021-08-03 10:07 |  | 21.05d |
| 59 |  | Implementar RFS13 | 0.38d | 2021-08-02 11:07 | 2021-08-02 14:07 | 53 | 21.05d |
| 60 |  | Implementar RFS14 | 0.39d | 2021-08-02 14:07 | 2021-08-03 10:07 | 59 | 21.05d |
| 61 | 1.5.2.1.3 | **Teste** | 1.06d | 2021-08-02 11:07 | 2021-08-03 11:37 |  | 21.05d |
| 62 |  | Testar RFC03 | 0.19d | 2021-08-02 11:07 | 2021-08-02 13:37 | 53 | 21.92d |
| 63 |  | Testar RFC04 | 0.19d | 2021-08-03 10:07 | 2021-08-03 11:37 | 58 | 21.05d |
| 64 | 1.6 | **Monitoramento e Controle** | 0.5d? | 2021-07-15 09:00 | 2021-07-15 14:00 |  | 35.75d |
| 65 |  | Acompanhar Projeto | 0.5d | 2021-07-15 09:00 | 2021-07-15 14:00 |  | 35.75d |
| 66 | 1.6.2 | **Gerência de Configuração** | 0.5d? | 2021-07-15 09:00 | 2021-07-15 14:00 |  | 35.75d |
| 67 |  | Elaborar Branch | 0d? | 2021-07-15 09:00 | 2021-07-15 09:00 |  | 36.25d |
| 68 |  | Realizar Merge da Branch X para a Master | 0.5d? | 2021-07-15 09:00 | 2021-07-15 14:00 |  | 35.75d |
| 69 | 1.7 | **Fechamento** | 0.88d? | 2021-08-03 11:37 | 2021-08-04 10:37 |  | 21.05d |
| 70 |  | Teste do Sistema | 0.5d? | 2021-08-03 11:37 | 2021-08-03 15:37 | 29 | 21.05d |

| ID | WBS | Task | Duration | Start | Finish | Predecessors | Total float |
| --- | --- | --- | --- | --- | --- | --- | --- |
| 71 |  | Aprovaçao do Cliente | 0.5d | 2021-08-03 15:37 | 2021-08-04 10:37 | 70 | 21.38d |
| 72 | 1.8 | **Controle de Mudanças** | 0.29d? | 2021-08-04 10:37 | 2021-08-04 13:57 |  | 21.38d |
| 73 |  | Realizar Mudanças Solicitas pelo Cliente | 0.41d? | 2021-08-04 10:37 | 2021-08-04 13:57 | 71 | 21.38d |

## Version 2 (saved 2021-07-19)

Note of the change: adicionando analistas no cronograma

Last finish stays 2021-09-03.

Changed:

| ID | Task | Other |
| --- | --- | --- |
| 1 | **Projeto Igreja** | baseline start none → 2021-07-15 09:00; baseline finish none → 2021-09-03 11:00 |
| 2 | **Prospecção** | baseline start none → 2021-07-15 09:00; baseline finish none → 2021-07-15 10:48 |
| 3 | **Estudo do tema** | baseline start none → 2021-07-15 09:00; baseline finish none → 2021-07-15 10:48 |
| 4 | Estudar Domínio de Aplicação | baseline start none → 2021-07-15 09:00; baseline finish none → 2021-07-15 10:36 |
| 5 | Divisão de tarefas | baseline start none → 2021-07-15 10:36; baseline finish none → 2021-07-15 10:48 |
| 6 | **Análise** | baseline start none → 2021-07-15 09:00; baseline finish none → 2021-07-19 11:18 |
| 7 | **Documento de Requisitos** | baseline start none → 2021-07-15 09:00; baseline finish none → 2021-07-16 10:18 |
| 8 | Elaborar DRE | baseline start none → 2021-07-15 10:48; baseline finish none → 2021-07-16 09:18 |
| 9 | Revisar DRE | baseline start none → 2021-07-16 09:18; baseline finish none → 2021-07-16 10:18 |
| 10 | Submeter DRE para Aprovação do Cliente | baseline start none → 2021-07-15 09:00; baseline finish none → 2021-07-15 09:00 |
| 11 | **Est. Prel. Tamanho** | baseline start none → 2021-07-16 10:18; baseline finish none → 2021-07-16 16:18 |
| 12 | Estimar Tamanho do Projeto | baseline start none → 2021-07-16 10:18; baseline finish none → 2021-07-16 14:18 |
| 13 | Revisar Estimativa de Tamanho do Projeto | baseline start none → 2021-07-16 14:18; baseline finish none → 2021-07-16 16:18 |
| 14 | **Est. Prel Cronograma** | baseline start none → 2021-07-16 16:18; baseline finish none → 2021-07-19 11:18 |
| 15 | Elaborar Cronograma Preliminar | baseline start none → 2021-07-16 16:18; baseline finish none → 2021-07-19 09:18 |
| 16 | Revisar Cronograma Preliminar | baseline start none → 2021-07-19 09:18; baseline finish none → 2021-07-19 11:18 |
| 17 | **MRB** | baseline start none → 2021-07-16 10:18; baseline finish none → 2021-07-19 09:18 |
| 18 | Elaborar MRB | baseline start none → 2021-07-16 10:18; baseline finish none → 2021-07-16 16:18 |
| 19 | Revisar MRB | baseline start none → 2021-07-16 16:18; baseline finish none → 2021-07-19 09:18 |
| 20 | **Projeto** | baseline start none → 2021-07-20 09:00; baseline finish none → 2021-07-22 16:18 |
| 21 | **Diagrama de Classes** | baseline start none → 2021-07-20 09:00; baseline finish none → 2021-07-20 16:00 |
| 22 | Elaborar Diagrama de Classe | baseline start none → 2021-07-20 09:00; baseline finish none → 2021-07-20 11:00 |
| 23 | Revisar Diagrama de Classe | baseline start none → 2021-07-20 11:00; baseline finish none → 2021-07-20 14:00 |
| 24 | Atualizar MRB | baseline start none → 2021-07-20 14:00; baseline finish none → 2021-07-20 16:00 |
| 25 | **Planejamento** | baseline start none → 2021-07-22 16:18; baseline finish none → 2021-07-23 11:36 |
| 26 | Pesquisar Soluções Existentes | baseline start none → 2021-07-22 16:18; baseline finish none → 2021-07-23 10:36 |
| 27 | Definir Linguagens e Frameworks | baseline start none → 2021-07-23 10:36; baseline finish none → 2021-07-23 11:12 |
| 28 | Revisar Divisão de tarefas | baseline start none → 2021-07-23 11:12; baseline finish none → 2021-07-23 11:36 |
| 29 | **Desenvolvimento** | baseline start none → 2021-07-23 11:36; baseline finish none → 2021-08-03 11:37 |
| 30 | **Release 01** | baseline start none → 2021-07-23 11:36; baseline finish none → 2021-07-29 14:07 |
| 31 | **Implementação** | baseline start none → 2021-07-23 11:36; baseline finish none → 2021-07-29 11:36 |
| 32 | **Requisitos Funcionais de Cliente 01** | baseline start none → 2021-07-23 11:36; baseline finish none → 2021-07-26 14:16 |
| 33 | Implementar RFS01 | baseline start none → 2021-07-23 11:36; baseline finish none → 2021-07-23 14:16 |
| 34 | Implementar RFS02 | baseline start none → 2021-07-23 14:16; baseline finish none → 2021-07-26 09:56 |
| 35 | Implementar RFS03 | baseline start none → 2021-07-26 09:56; baseline finish none → 2021-07-26 11:36 |
| 36 | Implementar RFS04 | baseline start none → 2021-07-26 11:36; baseline finish none → 2021-07-26 14:16 |
| 37 | **Requisitos Funcionais de Cliente 03** | baseline start none → 2021-07-26 14:16; baseline finish none → 2021-07-28 09:56 |
| 38 | Implementar RFS09 | baseline start none → 2021-07-26 14:16; baseline finish none → 2021-07-27 09:56 |
| 39 | Implementar RFS10 | baseline start none → 2021-07-27 09:56; baseline finish none → 2021-07-27 11:36 |
| 40 | Implementar RFS11 | baseline start none → 2021-07-27 11:36; baseline finish none → 2021-07-27 14:16 |
| 41 | Implementar RFS12 | baseline start none → 2021-07-27 14:16; baseline finish none → 2021-07-28 09:56 |
| 42 | **Requisitos Funcionais de Cliente 04** | baseline start none → 2021-07-28 09:56; baseline finish none → 2021-07-29 11:36 |
| 43 | Implementar RFS13 | baseline start none → 2021-07-28 09:56; baseline finish none → 2021-07-28 11:36 |
| 44 | Implementar RFS14 | baseline start none → 2021-07-28 11:36; baseline finish none → 2021-07-28 14:16 |
| 45 | Implementar RFS15 | baseline start none → 2021-07-28 14:16; baseline finish none → 2021-07-29 09:56 |
| 46 | Implementar RFS16 | baseline start none → 2021-07-29 09:56; baseline finish none → 2021-07-29 11:36 |
| 47 | **Teste** | baseline start none → 2021-07-26 14:16; baseline finish none → 2021-07-29 14:07 |
| 48 | Testar RC01 | baseline start none → 2021-07-26 14:16; baseline finish none → 2021-07-26 15:46 |
| 49 | Testar RC02 | baseline start none → 2021-07-28 09:56; baseline finish none → 2021-07-28 11:26 |
| 50 | Testar RC03 | baseline start none → 2021-07-29 11:36; baseline finish none → 2021-07-29 14:07 |
| 51 | **Release 02** | baseline start none → 2021-07-29 14:07; baseline finish none → 2021-08-03 11:37 |
| 52 | **Implementação** | baseline start none → 2021-07-29 14:07; baseline finish none → 2021-08-03 11:37 |
| 53 | **Requisitos Funcionais de Cliente 02** | baseline start none → 2021-07-29 14:07; baseline finish none → 2021-08-02 11:07 |
| 54 | Implementar RFS05 | baseline start none → 2021-07-29 14:07; baseline finish none → 2021-07-30 10:07 |
| 55 | Implementar RFS06 | baseline start none → 2021-07-30 10:07; baseline finish none → 2021-07-30 13:07 |
| 56 | Implementar RFS07 | baseline start none → 2021-07-30 13:07; baseline finish none → 2021-08-02 09:07 |
| 57 | Implementar RFS08 | baseline start none → 2021-08-02 09:07; baseline finish none → 2021-08-02 11:07 |
| 58 | **Requisitos Funcionais de Cliente 05** | baseline start none → 2021-08-02 11:07; baseline finish none → 2021-08-03 10:07 |
| 59 | Implementar RFS13 | baseline start none → 2021-08-02 11:07; baseline finish none → 2021-08-02 14:07 |
| 60 | Implementar RFS14 | baseline start none → 2021-08-02 14:07; baseline finish none → 2021-08-03 10:07 |
| 61 | **Teste** | baseline start none → 2021-08-02 11:07; baseline finish none → 2021-08-03 11:37 |
| 62 | Testar RFC03 | baseline start none → 2021-08-02 11:07; baseline finish none → 2021-08-02 13:37 |
| 63 | Testar RFC04 | baseline start none → 2021-08-03 10:07; baseline finish none → 2021-08-03 11:37 |
| 64 | **Monitoramento e Controle** | baseline start none → 2021-07-15 09:00; baseline finish none → 2021-07-15 14:00 |
| 65 | Acompanhar Projeto | baseline start none → 2021-07-15 09:00; baseline finish none → 2021-07-15 14:00 |
| 66 | **Gerência de Configuração** | baseline start none → 2021-07-15 09:00; baseline finish none → 2021-07-15 14:00 |
| 67 | Elaborar Branch | baseline start none → 2021-07-15 09:00; baseline finish none → 2021-07-15 09:00 |
| 68 | Realizar Merge da Branch X para a Master | baseline start none → 2021-07-15 09:00; baseline finish none → 2021-07-15 14:00 |
| 69 | **Fechamento** | baseline start none → 2021-08-03 11:37; baseline finish none → 2021-08-04 10:37 |
| 70 | Teste do Sistema | baseline start none → 2021-08-03 11:37; baseline finish none → 2021-08-03 15:37 |

| ID | Task | Other |
| --- | --- | --- |
| 71 | Aprovaçao do Cliente | baseline start none → 2021-08-03 15:37; baseline finish none → 2021-08-04 10:37 |
| 72 | **Controle de Mudanças** | baseline start none → 2021-08-04 10:37; baseline finish none → 2021-08-04 13:57 |
| 73 | Realizar Mudanças Solicitas pelo Cliente | baseline start none → 2021-08-04 10:37; baseline finish none → 2021-08-04 13:57 |

## Version 3 (saved 2021-07-26)

Note of the change: Merge pull request #1 from matheus-lima1/doc

Last finish stays 2021-09-03.

Added:

| ID | Task | Duration | Start | Finish | Predecessors | Resources |
| --- | --- | --- | --- | --- | --- | --- |
| 60 | Implementar RFS19 | 0.28d? | 2021-07-26 13:14 | 2021-07-27 09:14 | 59 | Analista 01; Analista 03; Analista 05 |
| 61 | Implementar RFS20 | 0.25d? | 2021-07-27 09:14 | 2021-07-27 11:14 | 60 | Analista 01; Analista 03; Analista 05 |
| 62 | **Requisitos Funcionais de Cliente 06** | 0.25d? | 2021-07-27 11:14 | 2021-07-27 14:14 |  |  |
| 63 | Implementar RFS21 | 0.38d? | 2021-07-27 11:14 | 2021-07-27 14:14 | 57 | Analista 01; Analista 03; Analista 05 |
| 64 | **Requisitos Funcionais de Cliente 07** | 0.62d | 2021-07-27 14:14 | 2021-07-28 10:14 |  |  |
| 65 | Implementar RFS22 | 0.4d | 2021-07-27 14:14 | 2021-07-28 10:14 | 62 | Analista 01; Analista 03; Analista 05 |
| 66 | **Requisitos Funcionais de Cliente 08** | 0.25d | 2021-07-28 10:14 | 2021-07-28 13:14 |  |  |
| 67 | Implementar RFS23 | 0.28d | 2021-07-28 10:14 | 2021-07-28 13:14 | 64 | Analista 01; Analista 03; Analista 05 |
| 69 | Testar RFC02 | 0.19d | 2021-07-22 11:34 | 2021-07-22 14:04 | 47 | Analista 02; Analista 04 |
| 72 | Testar RFC06 | 0.19d? | 2021-07-27 14:14 | 2021-07-27 15:44 | 62 | Analista 02; Analista 04 |
| 73 | Testar RFC07 | 0.19d? | 2021-07-28 10:14 | 2021-07-28 11:44 | 64 | Analista 02; Analista 04 |
| 74 | Testar RFC08 | 0.19d? | 2021-07-28 13:14 | 2021-07-28 14:44 | 66 | Analista 02; Analista 04 |

Removed: 50 Testar RC03

Changed:

| ID | Task | Start | Finish | Duration | Total float | Predecessors | Other |
| --- | --- | --- | --- | --- | --- | --- | --- |
| 20 | **Projeto** | 2021-07-20 09:00 → 2021-07-19 09:18 (-1d) | 2021-07-22 16:18 → 2021-07-19 16:18 (-3d) | 2.79d → 0.75d | none → 24.62d |  |  |
| 21 | **Diagrama de Classes** | 2021-07-20 09:00 → 2021-07-19 09:18 (-1d) | 2021-07-20 16:00 → 2021-07-19 16:18 (-1d) |  | 23.3d → 24.62d |  |  |
| 22 | Elaborar Diagrama de Classe | 2021-07-20 09:00 → 2021-07-19 09:18 (-1d) | 2021-07-20 11:00 → 2021-07-19 11:18 (-1d) |  | 23.3d → 24.62d |  |  |
| 23 | Revisar Diagrama de Classe | 2021-07-20 11:00 → 2021-07-19 11:18 (-1d) | 2021-07-20 14:00 → 2021-07-19 14:18 (-1d) |  | 23.3d → 24.62d |  |  |
| 24 | Atualizar MRB | 2021-07-20 14:00 → 2021-07-19 14:18 (-1d) | 2021-07-20 16:00 → 2021-07-19 16:18 (-1d) |  | 23.3d → 24.62d |  |  |
| 25 | **Planejamento** | 2021-07-22 16:18 → 2021-07-19 16:18 (-3d) | 2021-07-23 11:36 → 2021-07-20 10:24 (-3d) | 0.54d? → 0.39d? | 21.05d → 24.41d |  |  |
| 26 | Pesquisar Soluções Existentes | 2021-07-22 16:18 → 2021-07-19 16:18 (-3d) | 2021-07-23 10:36 → 2021-07-20 09:24 (-3d) | 0.4d? → 0.1d? | 21.05d → 24.41d |  |  |
| 27 | Definir Linguagens e Frameworks | 2021-07-23 10:36 → 2021-07-20 09:24 (-3d) | 2021-07-23 11:12 → 2021-07-20 10:00 (-3d) |  | 21.05d → 24.41d |  |  |
| 28 | Revisar Divisão de tarefas | 2021-07-23 11:12 → 2021-07-20 10:00 (-3d) | 2021-07-23 11:36 → 2021-07-20 10:24 (-3d) |  | 21.05d → 24.41d |  |  |
| 29 | **Desenvolvimento** | 2021-07-23 11:36 → 2021-07-20 10:24 (-3d) | 2021-08-03 11:37 → 2021-07-28 14:44 (-6d) | 7d? → 6.42d? | 21.05d → 24.41d |  |  |
| 30 | **Release 01** | 2021-07-23 11:36 → 2021-07-20 10:24 (-3d) | 2021-07-29 14:07 → 2021-07-20 14:34 (-9d) | 4.19d? → 0.4d? | 21.05d → 24.41d |  |  |
| 31 | **Implementação** | 2021-07-23 11:36 → 2021-07-20 10:24 (-3d) | 2021-07-29 11:36 → 2021-07-20 14:04 (-9d) | 4d? → 0.33d? | 21.05d → 24.41d |  |  |
| 32 | **Requisitos Funcionais de Cliente 01** | 2021-07-23 11:36 → 2021-07-20 10:24 (-3d) | 2021-07-26 14:16 → 2021-07-20 11:44 (-6d) | 1.21d? → 0.17d? | 21.05d → 24.41d |  |  |
| 33 | Implementar RFS01 | 2021-07-23 11:36 → 2021-07-20 10:24 (-3d) | 2021-07-23 14:16 → 2021-07-20 10:44 (-3d) | 0.33d → 0.04d | 21.05d → 24.41d |  |  |
| 34 | Implementar RFS02 | 2021-07-23 14:16 → 2021-07-20 10:44 (-3d) | 2021-07-26 09:56 → 2021-07-20 11:04 (-6d) | 0.33d? → 0.04d? | 21.05d → 24.78d |  |  |
| 35 | Implementar RFS03 | 2021-07-26 09:56 → 2021-07-20 11:04 (-6d) | 2021-07-26 11:36 → 2021-07-20 11:24 (-6d) | 0.21d? → 0.04d? | 21.05d → 24.78d |  |  |
| 36 | Implementar RFS04 | 2021-07-26 11:36 → 2021-07-20 11:24 (-6d) | 2021-07-26 14:16 → 2021-07-20 11:44 (-6d) | 0.33d? → 0.04d? | 21.05d → 24.78d |  |  |
| 37 | **Requisitos Funcionais de Cliente 04** | 2021-07-28 09:56 → 2021-07-20 11:44 (-8d) | 2021-07-29 11:36 → 2021-07-20 14:04 (-9d) | 1.21d → 0.17d | 21.05d → 24.78d |  |  |
| 38 | Implementar RFS13 | 2021-07-28 09:56 → 2021-07-20 11:44 (-8d) | 2021-07-28 11:36 → 2021-07-20 13:04 (-8d) | 0.21d → 0.05d | 21.05d → 24.78d | 52 → 32 |  |
| 39 | Implementar RFS14 | 2021-07-28 11:36 → 2021-07-20 13:04 (-8d) | 2021-07-28 14:16 → 2021-07-20 13:24 (-8d) | 0.33d → 0.04d | 21.05d → 24.78d |  |  |
| 40 | Implementar RFS15 | 2021-07-28 14:16 → 2021-07-20 13:24 (-8d) | 2021-07-29 09:56 → 2021-07-20 13:44 (-9d) | 0.33d → 0.04d | 21.05d → 24.78d |  |  |
| 41 | Implementar RFS16 | 2021-07-29 09:56 → 2021-07-20 13:44 (-9d) | 2021-07-29 11:36 → 2021-07-20 14:04 (-9d) | 0.21d → 0.04d | 21.05d → 24.78d |  |  |
| 42 | **Teste** | 2021-07-26 14:16 → 2021-07-20 11:44 (-6d) | 2021-07-29 14:07 → 2021-07-20 14:34 (-9d) | 2.98d → 0.23d | 21.05d → 24.78d |  |  |
| 43 | Testar RC01 | 2021-07-26 14:16 → 2021-07-20 11:44 (-6d) | 2021-07-26 15:46 → 2021-07-20 13:14 (-6d) | 0.19d → 0.06d | 23.84d → 24.95d |  |  |
| 44 | Testar RC04 | 2021-07-28 09:56 → 2021-07-20 14:04 (-8d) | 2021-07-28 11:26 → 2021-07-20 14:34 (-8d) | 0.19d → 0.06d | 22.26d → 24.78d | 52 → 37 | was named Testar RC02 |
| 45 | **Release 02** | 2021-07-29 14:07 → 2021-07-20 14:34 (-9d) | 2021-08-03 11:37 → 2021-07-28 14:44 (-6d) | 2.81d → 6.02d? | 21.05d → 24.78d |  |  |
| 46 | **Implementação** | 2021-07-29 14:07 → 2021-07-20 14:34 (-9d) | 2021-08-03 11:37 → 2021-07-28 14:44 (-6d) | 2.81d → 6.02d? | 21.05d → 24.78d |  |  |
| 47 | **Requisitos Funcionais de Cliente 02** | 2021-07-29 14:07 → 2021-07-20 14:34 (-9d) | 2021-08-02 11:07 → 2021-07-22 11:34 (-11d) |  | 21.05d → 24.78d |  |  |
| 48 | Implementar RFS05 | 2021-07-29 14:07 → 2021-07-20 14:34 (-9d) | 2021-07-30 10:07 → 2021-07-21 10:34 (-9d) | 0.39d → 0.45d | 21.05d → 24.41d | 30 → 42 |  |
| 49 | Implementar RFS06 | 2021-07-30 10:07 → 2021-07-21 10:34 (-9d) | 2021-07-30 13:07 → 2021-07-21 13:34 (-9d) | 0.27d → 0.32d | 21.05d → 24.41d |  |  |
| 50 | Implementar RFS07 | 2021-07-30 13:07 → 2021-07-21 13:34 (-9d) | 2021-08-02 09:07 → 2021-07-22 09:34 (-11d) | 0.27d → 0.32d | 21.05d → 24.41d |  |  |
| 51 | Implementar RFS08 | 2021-08-02 09:07 → 2021-07-22 09:34 (-11d) | 2021-08-02 11:07 → 2021-07-22 11:34 (-11d) |  | 21.05d → 24.41d |  |  |
| 52 | **Requisitos Funcionais de Cliente 03** | 2021-07-26 14:16 → 2021-07-22 11:34 (-4d) | 2021-07-28 09:56 → 2021-07-23 14:14 (-5d) | 1.58d? → 1.21d? | 21.05d → 24.78d |  |  |
| 53 | Implementar RFS09 | 2021-07-26 14:16 → 2021-07-22 11:34 (-4d) | 2021-07-27 09:56 → 2021-07-22 14:14 (-5d) |  | 21.05d → 24.78d | 32 → 47 |  |
| 54 | Implementar RFS10 | 2021-07-27 09:56 → 2021-07-22 14:14 (-5d) | 2021-07-27 11:36 → 2021-07-23 09:54 (-4d) | 0.21d? → 0.32d? | 21.05d → 24.41d |  |  |
| 55 | Implementar RFS11 | 2021-07-27 11:36 → 2021-07-23 09:54 (-4d) | 2021-07-27 14:16 → 2021-07-23 11:34 (-4d) | 0.33d? → 0.21d? | 21.05d → 24.41d |  |  |
| 56 | Implementar RFS12 | 2021-07-27 14:16 → 2021-07-23 11:34 (-4d) | 2021-07-28 09:56 → 2021-07-23 14:14 (-5d) |  | 21.05d → 24.78d |  |  |
| 57 | **Requisitos Funcionais de Cliente 05** | 2021-08-02 11:07 → 2021-07-23 14:14 (-10d) | 2021-08-03 10:07 → 2021-07-27 11:14 (-7d) | 0.88d → 1.75d? | 21.05d → 24.78d |  |  |
| 58 | Implementar RFS17 | 2021-08-02 11:07 → 2021-07-23 14:14 (-10d) | 2021-08-02 14:07 → 2021-07-26 10:14 (-7d) | 0.38d → 0.4d | 21.05d → 24.41d | 47 → 52 | was named Implementar RFS13 |
| 59 | Implementar RFS18 | 2021-08-02 14:07 → 2021-07-26 10:14 (-7d) | 2021-08-03 10:07 → 2021-07-26 13:14 (-8d) | 0.39d → 0.28d | 21.05d → 24.41d |  | was named Implementar RFS14 |
| 68 | **Teste** | 2021-08-02 11:07 → 2021-07-22 11:34 (-11d) | 2021-08-03 11:37 → 2021-07-28 14:44 (-6d) | 1.06d → 4.27d? | 21.05d → 24.78d |  |  |
| 70 | Testar RFC03 | 2021-08-02 11:07 → 2021-07-23 14:14 (-10d) | 2021-08-02 13:37 → 2021-07-23 15:44 (-10d) | 0.19d → 0.19d? | 21.92d → 27.66d | 47 → 52 | baseline start 2021-08-02 11:07 → none; baseline finish 2021-08-02 13:37 → none |
| 71 | Testar RFC05 | 2021-08-03 10:07 → 2021-07-27 11:14 (-7d) | 2021-08-03 11:37 → 2021-07-27 13:44 (-7d) |  | 21.05d → 25.91d |  | was named Testar RFC04 |
| 80 | **Fechamento** | 2021-08-03 11:37 → 2021-07-28 14:44 (-6d) | 2021-08-04 10:37 → 2021-07-29 16:44 (-6d) | 0.88d? → 1.25d? | 21.05d → 24.74d |  |  |
| 81 | Teste do Sistema | 2021-08-03 11:37 → 2021-07-28 14:44 (-6d) | 2021-08-03 15:37 → 2021-07-29 11:44 (-5d) | 0.5d? → 0.72d? | 21.05d → 24.74d |  |  |
| 82 | Aprovaçao do Cliente | 2021-08-03 15:37 → 2021-07-29 11:44 (-5d) | 2021-08-04 10:37 → 2021-07-29 16:44 (-6d) |  | 21.38d → 24.74d |  |  |
| 83 | **Controle de Mudanças** | 2021-08-04 10:37 → 2021-07-29 16:44 (-6d) | 2021-08-04 13:57 → 2021-07-30 11:20 (-5d) | 0.29d? → 0.45d? | 21.38d → 24.74d |  |  |
| 84 | Realizar Mudanças Solicitas pelo Cliente | 2021-08-04 10:37 → 2021-07-29 16:44 (-6d) | 2021-08-04 13:57 → 2021-07-30 11:20 (-5d) | 0.41d? → 0.45d? | 21.38d → 24.74d |  |  |

## Version 4 (saved 2021-08-02)

Note of the change: Atualizando o cronograma

Last finish stays 2021-09-03.

Changed:

| ID | Task | Start | Finish | Duration | Total float |
| --- | --- | --- | --- | --- | --- |
| 29 | **Desenvolvimento** |  | 2021-07-28 14:44 → 2021-07-28 15:00 | 6.42d? → 6.45d? | 24.41d → 4.83d |
| 45 | **Release 02** | 2021-07-20 14:34 → 2021-07-27 09:00 (+7d) | 2021-07-28 14:44 → 2021-07-28 15:00 | 6.02d? → 1.62d? | 24.78d → none |
| 46 | **Implementação** | 2021-07-20 14:34 → 2021-07-27 09:00 (+7d) | 2021-07-28 14:44 → 2021-07-28 11:00 | 6.02d? → 1.25d? | 24.78d → 26.33d |
| 47 | **Requisitos Funcionais de Cliente 02** | 2021-07-20 14:34 → 2021-07-27 09:00 (+7d) | 2021-07-22 11:34 → 2021-07-27 10:20 (+5d) | 1.75d → 0.17d | 24.78d → 26.33d |
| 48 | Implementar RFS05 | 2021-07-20 14:34 → 2021-07-27 09:00 (+7d) | 2021-07-21 10:34 → 2021-07-27 09:20 (+6d) | 0.45d → 0.04d | 24.41d → 26.33d |
| 49 | Implementar RFS06 | 2021-07-21 10:34 → 2021-07-27 09:20 (+6d) | 2021-07-21 13:34 → 2021-07-27 09:40 (+6d) | 0.32d → 0.04d | 24.41d → 26.33d |
| 50 | Implementar RFS07 | 2021-07-21 13:34 → 2021-07-27 09:40 (+6d) | 2021-07-22 09:34 → 2021-07-27 10:00 (+5d) | 0.32d → 0.04d | 24.41d → 26.33d |
| 51 | Implementar RFS08 | 2021-07-22 09:34 → 2021-07-27 10:00 (+5d) | 2021-07-22 11:34 → 2021-07-27 10:20 (+5d) | 0.25d → 0.04d | 24.41d → 26.33d |
| 52 | **Requisitos Funcionais de Cliente 03** | 2021-07-22 11:34 → 2021-07-27 10:20 (+5d) | 2021-07-23 14:14 → 2021-07-27 11:40 (+4d) | 1.21d? → 0.17d? | 24.78d → 26.33d |
| 53 | Implementar RFS09 | 2021-07-22 11:34 → 2021-07-27 10:20 (+5d) | 2021-07-22 14:14 → 2021-07-27 10:40 (+5d) | 0.33d? → 0.04d? | 24.78d → 26.33d |
| 54 | Implementar RFS10 | 2021-07-22 14:14 → 2021-07-27 10:40 (+5d) | 2021-07-23 09:54 → 2021-07-27 11:00 (+4d) | 0.32d? → 0.04d? | 24.41d → 26.33d |
| 55 | Implementar RFS11 | 2021-07-23 09:54 → 2021-07-27 11:00 (+4d) | 2021-07-23 11:34 → 2021-07-27 11:20 (+4d) | 0.21d? → 0.04d? | 24.41d → 26.33d |
| 56 | Implementar RFS12 | 2021-07-23 11:34 → 2021-07-27 11:20 (+4d) | 2021-07-23 14:14 → 2021-07-27 11:40 (+4d) | 0.33d? → 0.04d? | 24.78d → 26.71d |
| 57 | **Requisitos Funcionais de Cliente 05** | 2021-07-23 14:14 → 2021-07-27 11:40 (+4d) | 2021-07-27 11:14 → 2021-07-27 14:00 | 1.75d? → 0.17d? | 24.78d → 26.71d |
| 58 | Implementar RFS17 | 2021-07-23 14:14 → 2021-07-27 11:40 (+4d) | 2021-07-26 10:14 → 2021-07-27 12:00 (+1d) | 0.4d → 0.04d | 24.41d → 26.71d |
| 59 | Implementar RFS18 | 2021-07-26 10:14 → 2021-07-27 12:00 (+1d) | 2021-07-26 13:14 → 2021-07-27 13:20 (+1d) | 0.28d → 0.08d | 24.41d → 26.71d |
| 60 | Implementar RFS19 | 2021-07-26 13:14 → 2021-07-27 13:20 (+1d) | 2021-07-27 09:14 → 2021-07-27 13:40 | 0.28d? → 0.04d? | 24.41d → 26.71d |
| 61 | Implementar RFS20 | 2021-07-27 09:14 → 2021-07-27 13:40 | 2021-07-27 11:14 → 2021-07-27 14:00 | 0.25d? → 0.04d? | 24.41d → 26.71d |
| 62 | **Requisitos Funcionais de Cliente 06** | 2021-07-27 11:14 → 2021-07-27 14:00 | 2021-07-27 14:14 → 2021-07-27 14:40 | 0.25d? → 0.08d? | 24.78d → 26.71d |
| 63 | Implementar RFS21 | 2021-07-27 11:14 → 2021-07-27 14:00 | 2021-07-27 14:14 → 2021-07-27 14:40 | 0.38d? → 0.08d? | 24.78d → 26.71d |
| 64 | **Requisitos Funcionais de Cliente 07** | 2021-07-27 14:14 → 2021-07-27 14:40 | 2021-07-28 10:14 → 2021-07-28 09:20 | 0.62d → 0.46d | 24.41d → 26.33d |
| 65 | Implementar RFS22 | 2021-07-27 14:14 → 2021-07-27 14:40 | 2021-07-28 10:14 → 2021-07-28 09:20 | 0.4d → 0.12d | 24.41d → 26.33d |
| 66 | **Requisitos Funcionais de Cliente 08** | 2021-07-28 10:14 → 2021-07-28 09:20 | 2021-07-28 13:14 → 2021-07-28 10:00 | 0.25d → 0.08d | 24.41d → 26.33d |
| 67 | Implementar RFS23 | 2021-07-28 10:14 → 2021-07-28 09:20 | 2021-07-28 13:14 → 2021-07-28 10:00 | 0.28d → 0.08d | 24.41d → 26.33d |
| 68 | **Teste** | 2021-07-22 11:34 → 2021-07-27 10:20 (+5d) | 2021-07-28 14:44 → 2021-07-28 11:00 | 4.27d? → 1.08d? | 24.78d → 26.33d |
| 69 | Testar RFC02 | 2021-07-22 11:34 → 2021-07-27 10:20 (+5d) | 2021-07-22 14:04 → 2021-07-27 11:20 (+5d) | 0.19d → 0.12d | 28.87d → 27.29d |
| 70 | Testar RFC03 | 2021-07-23 14:14 → 2021-07-27 11:40 (+4d) | 2021-07-23 15:44 → 2021-07-27 13:40 (+4d) | 0.19d? → 0.12d? | 27.66d → 27.12d |
| 71 | Testar RFC05 | 2021-07-27 11:14 → 2021-07-27 14:00 | 2021-07-27 13:44 → 2021-07-27 15:00 | 0.19d → 0.12d | 25.91d → 26.96d |
| 72 | Testar RFC06 | 2021-07-27 14:14 → 2021-07-27 14:40 | 2021-07-27 15:44 → 2021-07-27 15:40 | 0.19d? → 0.12d? | 25.66d → 26.88d |
| 73 | Testar RFC07 | 2021-07-28 10:14 → 2021-07-28 09:20 | 2021-07-28 11:44 → 2021-07-28 10:20 | 0.19d? → 0.12d? | 25.03d → 26.42d |
| 74 | Testar RFC08 | 2021-07-28 13:14 → 2021-07-28 10:00 | 2021-07-28 14:44 → 2021-07-28 11:00 | 0.19d? → 0.12d? | 24.78d → 26.33d |
| 80 | **Fechamento** | 2021-07-28 14:44 → 2021-07-28 15:00 | 2021-07-29 16:44 → 2021-07-29 10:40 | 1.25d? → 0.58d? | 24.74d → 25.96d |
| 81 | Teste do Sistema | 2021-07-28 14:44 → 2021-07-28 15:00 | 2021-07-29 11:44 → 2021-07-29 09:40 | 0.72d? → 0.17d? | 24.74d → 25.96d |
| 82 | Aprovaçao do Cliente | 2021-07-29 11:44 → 2021-07-29 09:40 | 2021-07-29 16:44 → 2021-07-29 10:40 | 0.5d → 0.12d | 24.74d → 25.96d |
| 83 | **Controle de Mudanças** | 2021-07-29 16:44 → 2021-07-29 10:40 | 2021-07-30 11:20 → 2021-07-29 11:20 (-1d) | 0.45d? → 0.08d? | 24.74d → 25.96d |
| 84 | Realizar Mudanças Solicitas pelo Cliente | 2021-07-29 16:44 → 2021-07-29 10:40 | 2021-07-30 11:20 → 2021-07-29 11:20 (-1d) | 0.45d? → 0.08d? | 24.74d → 25.96d |
